Schedule from MS Project, 2018-09-19 to 2019-01-20, costs in ¥, A marks actual dates.
Microsoft

## Calendars

- 标准: Mon-Fri 08:00-12:00, 13:00-17:00; Sat-Sun 08:00-21:00. Exceptions (off unless hours are given): 2018-10-01 to 2018-10-07 (国庆假期).

## Resources

| Resource | Rate |
| --- | --- |
| 蔡峰 | 28 |
| 黄为波 | 28 |
| 江亮儒 | 28 |
| 苏雨豪 | 28 |
| 陈子卿 | 28 |
| 小组全体成员 |  |

## Schedule

| ID | WBS | Task | Type | Duration | Start | Finish | Predecessors | Complete | Actual finish | Baseline start | Baseline finish | Baseline duration | Constraint | Resources | Work | Actual work | Cost | Actual cost |
| --- | --- | --- | --- | --- | --- | --- | --- | --- | --- | --- | --- | --- | --- | --- | --- | --- | --- | --- |
| 1 | 1 | **需求工程项目准备** |  | 55.25d | 2018-09-19 09:00 A | 2018-11-11 18:00 |  | 100% | 2018-11-11 10:00 | 2018-09-19 09:00 | 2018-11-08 18:00 | 59.75d |  |  | 58.5h | 58.5h | 1,050 | 1,050 |
| 2 | 1.1 | 确定分组成员 | manual | 1h | 2018-09-19 09:00 A | 2018-09-19 10:00 A |  | 100% |  | 2018-09-19 09:00 | 2018-09-19 10:00 | 1h |  | 小组全体成员 | 1h | 1h |  |  |
| 3 | 1.2 | 课题选定 | manual | 2d | 2018-09-19 10:00 A | 2018-09-21 10:00 A | 2 | 100% |  | 2018-09-19 09:00 | 2018-09-20 18:00 | 2d |  | 小组全体成员 | 2h | 2h |  |  |
| 4 | 1.3 | 统一开发工具 |  | 1d | 2018-09-19 10:00 A | 2018-09-20 10:00 A | 2 | 100% |  | 2018-09-19 09:00 | 2018-09-20 09:00 | 1d |  | 小组全体成员 | 8h | 8h |  |  |
| 5 | 1.4 | 确定小组成员职责 | manual | 1d | 2018-09-19 10:00 A | 2018-09-20 10:00 A | 2 | 100% |  | 2018-09-26 09:00 | 2018-09-27 09:00 | 1d |  | 小组全体成员 | 8h | 8h |  |  |
| 6 | 1.5 | **需求工程项目计划** |  | 47d | 2018-09-26 09:00 A | 2018-11-11 18:00 |  | 100% | 2018-11-11 10:00 | 2018-09-26 09:00 | 2018-11-07 18:00 | 50.5d |  |  | 39.5h | 39.5h | 1,050 | 1,050 |
| 7 | 1.5.1 | 采用需求工程项目计划模板 | manual | 0.1h | 2018-09-28 09:00 A | 2018-09-28 09:06 A |  | 100% |  |  |  |  |  | 黄为波 | 0.1h | 0.1h | 2.8 | 2.8 |
| 8 | 1.5.2 | 人力资源管理计划 | manual | 3h | 2018-09-29 09:00 A | 2018-09-29 12:00 A | 7 | 100% |  | 2018-09-28 09:00 | 2018-09-28 12:00 | 3h |  | 蔡峰 | 3h | 3h | 84 | 84 |
| 9 | 1.5.3 | 成本管理计划 | manual | 2h | 2018-09-29 09:00 A | 2018-09-29 11:00 A | 7 | 100% |  | 2018-09-28 09:00 | 2018-09-28 12:00 | 3h |  | 陈子卿 | 2h | 2h | 56 | 56 |
| 10 | 1.5.4 | 沟通管理计划 | manual | 3h | 2018-09-29 09:00 A | 2018-09-29 12:00 A | 7 | 100% |  | 2018-09-28 09:00 | 2018-09-28 12:00 | 3h |  | 苏雨豪 | 3h | 3h | 84 | 84 |
| 11 | 1.5.5 | 风险管理计划 | manual | 3h | 2018-09-29 09:00 A | 2018-09-29 12:00 A | 7 | 100% |  | 2018-09-28 09:00 | 2018-09-28 12:00 | 3h |  | 陈子卿 | 3h | 3h | 84 | 84 |
| 12 | 1.5.6 | 需求工程项目计划甘特图与wbs | manual | 2h | 2018-09-29 09:00 A | 2018-09-29 11:00 A |  | 100% |  |  |  |  |  | 黄为波 | 2h | 2h | 56 | 56 |
| 14 | 1.5.7 | 可行性分析报告起草 |  | 3h | 2018-09-30 15:00 A | 2018-09-30 18:00 A |  | 100% |  | 2018-09-27 09:00 | 2018-09-27 15:00 | 5h | finish no earlier than 2018-09-30 18:00 | 江亮儒 | 3h | 3h | 84 | 84 |
| 15 | 1.5.8 | 整合并检查需求工程项目计划 | manual | 1h | 2018-09-30 09:00 A | 2018-09-30 10:00 A | 7, 8, 9, 10, 11 | 100% |  |  |  |  |  | 黄为波 | 0.3h | 0.3h | 8.4 | 8.4 |
| 16 | 1.5.9 | 需求工程项目计划PPT起草 | manual | 2h | 2018-09-30 09:00 A | 2018-09-30 11:00 A | 7, 8, 9, 10, 11 | 100% |  |  |  |  |  | 苏雨豪 | 2h | 2h | 56 | 56 |
| 17 | 1.5.10 | 需求计划的项目概述错误信息修改 | manual | 1h | 2018-10-13 09:00 A | 2018-10-13 10:00 A | 15 | 100% |  |  |  |  |  | 黄为波 | 1h | 1h | 28 | 28 |
| 18 | 1.5.11 | 增加并细化了技术可行性分析的有关内容 | manual | 1h | 2018-10-13 09:00 A | 2018-10-13 10:00 A | 14 | 100% |  |  |  |  |  | 黄为波 | 1h | 1h | 28 | 28 |
| 19 | 1.5.12 | 修改人力资源管理部分 | manual | 1h | 2018-10-14 09:00 A | 2018-10-14 10:00 A | 15, 8 | 100% |  |  |  |  |  | 蔡峰 | 1h | 1h | 28 | 28 |
| 20 | 1.5.13 | 修改wbs项目收尾部分 | manual | 0.5h | 2018-10-18 09:00 A | 2018-10-18 09:30 A | 12 | 100% |  |  |  |  |  | 黄为波 | 0.5h | 0.5h | 14 | 14 |
| 21 | 1.5.14 | 项目章程的编写 | manual | 1h | 2018-10-20 09:00 A | 2018-10-20 10:00 A |  | 100% |  |  |  |  |  | 苏雨豪 | 1h | 1h | 28 | 28 |
| 22 | 1.5.15 | 需求工程项目计划修改(更新培训日期，删除了不必要的内容) | manual | 1.5h | 2018-10-20 09:00 A | 2018-10-20 10:30 A | 17 | 100% |  |  |  |  |  | 蔡峰; 陈子卿 | 2h | 2h | 56 | 56 |
| 23 | 1.5.16 | 修改需求工程项目计划目录 | manual | 0.1h | 2018-10-21 09:00 A | 2018-10-21 09:06 A | 22 | 100% |  |  |  |  |  | 陈子卿 | 0.1h | 0.1h | 2.8 | 2.8 |
| 24 | 1.5.17 | 质量保证计划编写 | manual | 2h | 2018-10-27 09:00 A | 2018-10-27 11:00 A | 22 | 100% |  |  |  |  |  | 江亮儒; 苏雨豪 | 4h | 4h | 112 | 112 |
| 25 | 1.5.18 | 在需求工程项目计划增加范围、时间、质量管理计划 | manual | 2h | 2018-10-27 09:00 A | 2018-10-27 11:00 A | 23 | 100% |  |  |  |  |  | 黄为波 | 2h | 2h | 56 | 56 |
| 26 | 1.5.19 | 根据预评审对“人员配置管理计划”以及“干系人手册”进行修改 | manual | 1h | 2018-10-27 09:00 A | 2018-10-27 10:00 A | 25 | 100% |  |  |  |  |  | 蔡峰 | 1h | 1h | 28 | 28 |
| 27 | 1.5.20 | 风险管理计划修改，新增采购计划 | manual | 1h | 2018-10-27 09:00 A | 2018-10-27 10:00 A | 26 | 100% |  |  |  |  |  | 陈子卿 | 1h | 1h | 28 | 28 |
| 28 | 1.5.21 | 修改需求工程项目计划答辩PPT | manual | 1h | 2018-10-28 09:00 A | 2018-10-28 10:00 A | 27 | 100% |  |  |  |  |  | 蔡峰; 陈子卿 | 2h | 2h | 56 | 56 |
| 29 | 1.5.22 | 小组组内模拟评审，修改了相关文档错误内容 | manual | 1h | 2018-10-30 09:00 A | 2018-10-30 10:00 A | 28 | 100% |  |  |  |  |  | 小组全体成员 | 1h | 1h |  |  |
| 30 | 1.5.23 | 需求工程项目计划评审 | milestone, manual | 0d | 2018-10-31 09:00 A | 2018-10-31 09:00 A | 29 | 100% |  |  |  |  |  |  |  |  |  |  |
| 31 | 1.5.24 | 修改风险管理计划以及预算 | manual | 0.5h | 2018-11-01 09:00 A | 2018-11-01 09:30 A | 30 | 100% |  |  |  |  |  | 陈子卿 | 0.5h | 0.5h | 14 | 14 |
| 32 | 1.5.25 | 修改项目章程的批准 | manual | 0.5h | 2018-11-04 09:00 A | 2018-11-04 09:30 A | 30 | 100% |  |  |  |  |  | 苏雨豪 | 0.5h | 0.5h | 14 | 14 |
| 33 | 1.5.26 | 修改干系人手册与沟通管理计划 | manual | 0.5h | 2018-11-01 09:00 A | 2018-11-01 09:30 A | 30 | 100% |  |  |  |  |  | 蔡峰 | 0.5h | 0.5h | 14 | 14 |
| 34 | 1.5.27 | 修改可行性分析报告增加SWOT分析 | manual | 0.5h | 2018-11-04 09:00 A | 2018-11-04 09:30 A | 30 | 100% |  |  |  |  |  | 江亮儒 | 0.5h | 0.5h | 14 | 14 |
| 35 | 1.5.28 | 根据评审修改wbs | manual | 0.5h | 2018-11-11 09:00 A | 2018-11-11 09:30 A |  | 100% |  |  |  |  |  | 黄为波 | 0.5h | 0.5h | 14 | 14 |
| 36 | 1.5.29 | 小组个人对系统进行了解与构想 | manual | 1h | 2018-11-11 09:00 A | 2018-11-11 10:00 A |  | 100% |  |  |  |  |  | 小组全体成员 | 1h | 1h |  |  |

| ID | WBS | Task | Type | Duration | Start | Finish | Predecessors | Baseline start | Baseline finish | Baseline duration | Total slack | Resources | Work | Cost |
| --- | --- | --- | --- | --- | --- | --- | --- | --- | --- | --- | --- | --- | --- | --- |
| 37 | 2 | **需求开发阶段** |  | 57.75d | 2018-11-01 09:00 | 2018-12-19 18:00 |  | 2018-11-01 09:00 | 2018-12-08 18:00 | 44.38d |  |  | 38h | 840 |
| 38 | 2.1 | **需求获取** |  | 17.62d | 2018-11-15 09:00 | 2018-11-30 10:00 |  | 2018-11-05 09:00 | 2018-11-14 15:00 | 10.88d | 0d |  | 19h | 364 |
| 39 | 2.1.1 | 用户群分类 | manual | 1h | 2018-11-15 09:00 | 2018-11-15 10:00 | 6, 30 | 2018-11-08 09:00 | 2018-11-08 11:00 | 2h |  | 蔡峰 | 1h | 28 |
| 40 | 2.1.2 | 定义愿景和范围 | manual | 2h | 2018-11-24 09:00 | 2018-11-24 11:00 | 6, 30 | 2018-11-08 09:00 | 2018-11-08 12:00 | 3h |  | 小组全体成员 | 2h |  |
| 41 | 2.1.3 | 初步制定功能点列表 | manual | 1h | 2018-11-25 09:00 | 2018-11-25 10:00 | 6, 30 | 2018-11-08 09:00 | 2018-11-08 12:00 | 3h |  | 江亮儒; 苏雨豪 | 2h | 56 |
| 42 | 2.1.4 | 选择产品代表 | manual | 1h | 2018-11-25 09:00 | 2018-11-25 10:00 | 6, 41 | 2018-11-08 09:00 | 2018-11-08 10:00 | 1h |  | 小组全体成员 | 1h |  |
| 43 | 2.1.5 | 建立核心队伍 | manual | 1h | 2018-11-25 09:00 | 2018-11-25 10:00 | 39, 41 | 2018-11-08 09:00 | 2018-11-08 10:00 | 1h |  | 小组全体成员 | 1h |  |
| 44 | 2.1.6 | 项目下达者的访谈 | manual | 1h | 2018-11-26 09:00 | 2018-11-26 10:00 | 41, 51, 43 | 2018-11-14 09:00 | 2018-11-14 10:00 | 1h |  | 小组全体成员 | 1h |  |
| 45 | 2.1.7 | 绘制关联图 | manual | 1h | 2018-11-27 09:00 | 2018-11-27 10:00 | 44 | 2018-11-12 09:00 | 2018-11-12 11:00 | 2h |  | 蔡峰 | 1h | 28 |
| 46 | 2.1.8 | 画用例图 | manual | 1h | 2018-11-27 09:00 | 2018-11-27 10:00 | 44 | 2018-11-09 09:00 | 2018-11-10 09:00 | 1d |  | 江亮儒 | 1h | 28 |
| 47 | 2.1.9 | 教师需求第一次访谈 | manual | 1h | 2018-11-27 09:00 | 2018-11-27 10:00 | 45, 46 | 2018-11-06 09:00 | 2018-11-06 10:00 | 1h |  | 陈子卿 | 1h | 28 |
| 48 | 2.1.10 | 学生需求第一次访谈 | manual | 1h | 2018-11-28 09:00 | 2018-11-28 10:00 | 45, 46 | 2018-11-06 09:00 | 2018-11-06 10:00 | 1h |  | 苏雨豪 | 1h | 28 |
| 49 | 2.1.11 | 游客需求第一次访谈 | manual | 1h | 2018-11-28 09:00 | 2018-11-28 10:00 | 45, 46 | 2018-11-06 09:00 | 2018-11-06 10:00 | 1h |  | 黄为波 | 1h | 28 |
| 50 | 2.1.12 | 更新用例图 | manual | 1h | 2018-11-29 09:00 | 2018-11-29 10:00 | 45, 46, 47, 48, 49 | 2018-11-12 09:00 | 2018-11-12 14:00 | 4h |  | 苏雨豪 | 1h | 28 |
| 51 | 2.1.13 | 制作界面原型 | manual | 1h | 2018-11-29 09:00 | 2018-11-29 10:00 |  | 2018-11-09 09:00 | 2018-11-10 09:00 | 1d |  | 陈子卿 | 1h | 28 |
| 52 | 2.1.14 | 教师需求第二次访谈 | manual | 1h | 2018-11-30 09:00 | 2018-11-30 10:00 | 47 | 2018-11-12 09:00 | 2018-11-12 10:00 | 1h |  | 黄为波 | 1h | 28 |
| 53 | 2.1.15 | 学生需求第二次访谈 | manual | 1h | 2018-11-30 09:00 | 2018-11-30 10:00 | 48 | 2018-11-12 09:00 | 2018-11-12 10:00 | 1h |  | 江亮儒 | 1h | 28 |
| 54 | 2.1.16 | 游客需求第二次访谈 | manual | 1h | 2018-11-30 09:00 | 2018-11-30 10:00 | 49 | 2018-11-12 09:00 | 2018-11-12 10:00 | 1h |  | 蔡峰 | 1h | 28 |
| 55 | 2.1.17 | 更新界面原型 | manual | 1h | 2018-11-30 09:00 | 2018-11-30 10:00 | 51 | 2018-11-14 09:00 | 2018-11-14 15:00 | 5h |  | 小组全体成员 | 1h |  |
| 56 | 2.2 | **需求分析** |  | 3.75d | 2018-12-02 09:00 | 2018-12-05 10:00 |  | 2018-11-15 09:00 | 2018-11-21 10:30 | 7.44d | 0d |  | 7h | 168 |
| 57 | 2.2.1 | 创建开发原型 | manual | 1h | 2018-12-02 09:00 | 2018-12-02 10:00 | 39, 40, 41, 42, 43 | 2018-11-15 09:00 | 2018-11-15 12:00 | 3h |  | 江亮儒; 苏雨豪 | 2h | 56 |
| 58 | 2.2.2 | 分析获取需求的可行性 | manual | 1h | 2018-12-03 09:00 | 2018-12-03 10:00 | 44, 45, 46, 50, 51, 55 | 2018-11-16 09:00 | 2018-11-16 12:00 | 3h |  | 陈子卿; 黄为波 | 2h | 56 |
| 59 | 2.2.3 | 确定需求的优先级 | manual | 1h | 2018-12-04 09:00 | 2018-12-04 10:00 | 58 | 2018-11-16 09:00 | 2018-11-16 11:00 | 2h |  | 蔡峰 | 1h | 28 |
| 60 | 2.2.4 | 需求建模 | manual | 1h | 2018-12-04 09:00 | 2018-12-04 10:00 | 58, 59 | 2018-11-16 09:00 | 2018-11-16 12:00 | 3h |  | 苏雨豪 | 1h | 28 |
| 61 | 2.2.5 | 编写数据字典 | manual | 1h | 2018-12-05 09:00 | 2018-12-05 10:00 | 57, 58, 59, 60 | 2018-11-19 09:00 | 2018-11-20 11:00 | 10h |  | 小组全体成员 | 1h |  |

| ID | WBS | Task | Type | Duration | Start | Finish | Predecessors | Baseline start | Baseline finish | Baseline duration | Resources | Work | Cost |
| --- | --- | --- | --- | --- | --- | --- | --- | --- | --- | --- | --- | --- | --- |
| 62 | 2.3 | **需求规范规格** |  | 25.75d | 2018-11-21 09:00 | 2018-12-12 18:00 |  | 2018-11-21 09:00 | 2018-11-28 18:00 | 9.25d |  | 6h | 140 |
| 63 | 2.3.1 | 使用需求规格说明书的模版 | manual | 1h | 2018-12-07 09:00 | 2018-12-07 10:00 |  | 2018-11-22 09:00 | 2018-11-22 10:00 | 1h | 蔡峰 | 1h | 28 |
| 64 | 2.3.2 | 确认需求来源 | manual | 1h | 2018-12-08 09:00 | 2018-12-08 10:00 | 44, 47, 48, 49, 52, 53, 54 | 2018-11-22 09:00 | 2018-11-22 11:00 | 2h | 陈子卿 | 1h | 28 |
| 65 | 2.3.3 | 确定每个需求的唯一标识 | manual | 1h | 2018-12-09 09:00 | 2018-12-09 10:00 | 58, 59, 60 | 2018-11-23 09:00 | 2018-11-23 14:00 | 4h | 黄为波 | 1h | 28 |
| 66 | 2.3.4 | 记录非功能需求 | manual | 1h | 2018-12-10 09:00 | 2018-12-10 10:00 |  | 2018-11-23 09:00 | 2018-11-23 11:00 | 2h | 苏雨豪; 陈子卿 | 2h | 56 |
| 67 | 2.3.5 | 编写需求规格说明书 | manual | 1h | 2018-12-11 09:00 | 2018-12-11 10:00 | 63, 64, 65, 66 | 2018-11-26 09:00 | 2018-11-28 09:00 | 2d | 小组全体成员 | 1h |  |
| 68 | 2.3.6 | 需求SRS评审 | milestone, manual | 0d | 2018-12-12 09:00 | 2018-12-12 09:00 | 67 |  |  |  |  |  |  |
| 69 | 2.4 | **需求规格审核** |  | 9.25d | 2018-12-12 09:00 | 2018-12-19 18:00 |  | 2018-11-28 09:00 | 2018-12-03 18:00 | 7.25d |  | 6h | 168 |
| 70 | 2.4.1 | 确定合格标准 | manual | 1h | 2018-12-13 09:00 | 2018-12-13 10:00 | 68 | 2018-11-29 09:00 | 2018-11-29 14:00 | 4h | 蔡峰; 苏雨豪 | 2h | 56 |
| 71 | 2.4.2 | 编写用户手册 | manual | 1h | 2018-12-14 09:00 | 2018-12-14 10:00 | 55, 68 | 2018-11-30 09:00 | 2018-11-30 16:00 | 6h | 陈子卿 | 1h | 28 |
| 72 | 2.4.3 | 进行需求测试 | manual | 1h | 2018-12-14 09:00 | 2018-12-14 10:00 | 68 | 2018-12-03 09:00 | 2018-12-03 14:00 | 4h | 黄为波; 江亮儒; 苏雨豪 | 3h | 84 |
| 73 | 3 | **需求管理阶段** |  | 11.25d | 2018-12-20 09:00 | 2018-12-29 17:00 |  | 2018-12-05 09:00 | 2018-12-13 18:00 | 10.25d |  | 10h | 280 |
| 74 | 3.1 | 建立需求变更控制过程 | manual | 1h | 2018-12-18 09:00 | 2018-12-18 10:00 | 72 | 2018-12-05 09:00 | 2018-12-06 09:00 | 1d | 蔡峰 | 1h | 28 |
| 75 | 3.2 | 对需求变更影响分析 | manual | 1h | 2018-12-21 09:00 | 2018-12-21 10:00 | 74 | 2018-12-05 09:00 | 2018-12-06 09:00 | 1d | 黄为波 | 1h | 28 |
| 76 | 3.3 | 建立基线并控制需求集合版本 | manual | 1h | 2018-12-22 09:00 | 2018-12-22 10:00 | 75 | 2018-12-05 09:00 | 2018-12-06 09:00 | 1d | 江亮儒 | 1h | 28 |
| 77 | 3.4 | 记录需求变更的历史 | manual | 1h | 2018-12-23 09:00 | 2018-12-23 10:00 | 76 | 2018-12-06 09:00 | 2018-12-06 14:00 | 4h | 蔡峰 | 1h | 28 |
| 78 | 3.5 | 衡量需求的稳定性 | manual | 1h | 2018-12-22 09:00 | 2018-12-22 10:00 | 67, 70, 71 | 2018-12-07 09:00 | 2018-12-08 09:00 | 1d | 黄为波 | 1h | 28 |
| 79 | 3.6 | 重新编写测试用例 | manual | 1h | 2018-12-22 09:00 | 2018-12-22 10:00 |  | 2018-12-07 09:00 | 2018-12-08 09:00 | 1d | 江亮儒 | 1h | 28 |
| 80 | 3.7 | 完善界面原型 | manual | 1h | 2018-12-23 09:00 | 2018-12-23 10:00 | 55, 71 | 2018-12-10 09:00 | 2018-12-12 09:00 | 2d | 陈子卿; 黄为波 | 2h | 56 |
| 81 | 3.8 | 完善用户手册 | manual | 1h | 2018-12-24 09:00 | 2018-12-24 10:00 | 80 | 2018-12-10 09:00 | 2018-12-12 09:00 | 2d | 蔡峰; 江亮儒 | 2h | 56 |
| 82 | 3.9 | 验证变更评审 | milestone, manual | 0d | 2018-12-25 09:00 | 2018-12-25 09:00 | 77, 78, 79, 80, 81 | 2018-12-10 09:00 | 2018-12-12 09:00 | 2d | 苏雨豪 |  |  |
| 83 | 4 | **项目收尾** |  | 19.25d | 2019-01-05 09:00 | 2019-01-20 18:00 |  |  |  |  |  | 7h |  |
| 84 | 4.1 | 制作最终评审PPT | manual | 4h | 2019-01-05 09:00 | 2019-01-05 13:00 | 82 |  |  |  | 小组全体成员 | 4h |  |
| 85 | 4.2 | 小组成员个人总结 | manual | 1h | 2019-01-06 09:00 | 2019-01-06 10:00 | 82 |  |  |  | 小组全体成员 | 1h |  |
| 86 | 4.3 | 小组总体工作总结 | manual | 2h | 2019-01-12 09:00 | 2019-01-12 11:00 | 82 |  |  |  | 小组全体成员 | 2h |  |
| 87 | 4.4 | 最终评审PPT答辩 | milestone, manual | 0d | 2019-01-20 09:00 | 2019-01-20 09:00 | 84, 85, 86 |  |  |  | 小组全体成员 |  |  |

| ID | WBS | Task | Type | Duration | Start | Finish | Predecessors | Total slack | Free slack | Resources | Work | Cost |
| --- | --- | --- | --- | --- | --- | --- | --- | --- | --- | --- | --- | --- |
| 88 | 5 | **培训与翻转课堂** |  | 38.25d | 2018-09-28 09:00 | 2018-11-06 09:00 |  | 0d |  |  | 25h | 504 |
| 89 | 5.1 | 负责讲解project的使用 | manual | 2h | 2018-09-28 09:00 | 2018-09-28 11:00 |  |  |  | 小组全体成员; 黄为波 | 3h | 28 |
| 90 | 5.2 | 负责讲解word文档规范排版 | manual | 1h | 2018-09-29 09:00 | 2018-09-29 10:00 |  |  |  | 黄为波; 小组全体成员 | 2h | 28 |
| 91 | 5.3 | uml概述的学习以及PPT制作 | manual | 1h | 2018-10-13 09:00 | 2018-10-13 10:00 |  |  |  | 小组全体成员 | 1h |  |
| 92 | 5.4 | 1.7UML2.0新特性+目录 | manual | 2h | 2018-10-14 09:00 | 2018-10-14 11:00 | 91 |  |  | 苏雨豪 | 2h | 56 |
| 93 | 5.5 | 完成1.1-1.4UML的结构制作 | manual | 2h | 2018-10-14 09:00 | 2018-10-14 11:00 | 91 |  |  | 陈子卿 | 2h | 56 |
| 94 | 5.6 | UML图PPT的初步编写 | manual | 2h | 2018-10-14 09:00 | 2018-10-14 11:00 | 91 |  |  | 江亮儒 | 2h | 56 |
| 95 | 5.7 | 完成UML视图及系统开发阶段部分 | manual | 2h | 2018-10-14 09:00 | 2018-10-14 11:00 | 91 |  |  | 蔡峰 | 2h | 56 |
| 96 | 5.8 | uml概述PPT答辩 | milestone, manual | 0d | 2018-10-17 09:00 | 2018-10-17 09:00 |  |  |  |  |  |  |
| 97 | 5.9 | uml概述PPT修改 | manual | 0.5h | 2018-10-19 09:00 | 2018-10-19 09:30 | 92, 93, 94, 95 |  |  | 江亮儒 | 0.5h | 14 |
| 98 | 5.10 | uml工具的学习 | manual | 1h | 2018-10-21 09:00 | 2018-10-21 10:00 |  |  |  | 小组全体成员 | 1h |  |
| 99 | 5.11 | uml工具翻转PPT制作 | manual | 1h | 2018-10-21 09:00 | 2018-10-21 10:00 |  |  |  | 江亮儒 | 1.5h | 42 |
| 100 | 5.12 | uml工具翻转PPT答辩 | milestone, manual | 0d | 2018-10-24 09:00 | 2018-10-24 09:00 |  |  |  |  |  |  |
| 101 | 5.13 | uml建模基础学习 | manual | 1h | 2018-10-25 09:00 | 2018-10-25 10:00 |  |  |  | 小组全体成员 | 1h |  |
| 102 | 5.14 | 用例图、类图PPT制作 |  | 2h | 2018-10-25 10:00 | 2018-10-25 12:00 | 101 | 103.38d | 6.88d | 黄为波 | 2h | 56 |
| 103 | 5.15 | 通信图PPT制作 | manual | 1h | 2018-10-27 09:00 | 2018-10-27 10:00 | 101 |  |  | 陈子卿 | 1h | 28 |
| 104 | 5.16 | 部署图PPT制作 | manual | 1h | 2018-10-28 09:00 | 2018-10-28 10:00 | 101 |  |  | 江亮儒 | 1h | 28 |
| 105 | 5.17 | 状态机图PPT制作 | manual | 1h | 2018-10-28 09:00 | 2018-10-28 10:00 | 101 |  |  | 苏雨豪 | 1h | 28 |
| 106 | 5.18 | 顺序图PPT制作 | manual | 1h | 2018-10-27 09:00 | 2018-10-27 10:00 | 101 |  |  | 蔡峰 | 1h | 28 |
| 107 | 5.19 | uml图PPT答辩 | milestone, manual | 0d | 2018-10-31 09:00 | 2018-10-31 09:00 | 102, 103, 104, 105, 106 |  |  |  |  |  |
| 108 | 5.20 | uml界面原型学习 | manual | 1h | 2018-11-04 09:00 | 2018-11-04 10:00 |  |  |  | 小组全体成员 | 1h |  |
| 109 | 5.21 | uml界面原型翻转 | milestone, manual | 0d | 2018-11-06 09:00 | 2018-11-06 09:00 | 108 |  |  |  |  |  |
| 110 | 6 | **会议** |  | 50.56d | 2018-09-21 09:00 | 2018-11-10 09:30 |  | 0d |  |  | 7.5h |  |
| 111 | 6.1 | 第1次会议（明确贯穿项目的职责） | manual | 1h | 2018-09-21 09:00 | 2018-09-21 10:00 |  |  |  | 小组全体成员 | 1h |  |
| 112 | 6.2 | 第2次会议(任务的安排与约定) | manual | 1h | 2018-09-28 09:00 | 2018-09-28 10:00 |  |  |  | 小组全体成员 | 1h |  |
| 113 | 6.3 | 第3次会议(任务的安排与约定) | manual | 1h | 2018-10-12 09:00 | 2018-10-12 10:00 |  |  |  | 小组全体成员 | 1h |  |
| 114 | 6.4 | 第4次会议(任务的安排与约定) | manual | 1h | 2018-10-19 09:00 | 2018-10-19 10:00 |  |  |  | 小组全体成员 | 1h |  |
| 115 | 6.5 | 第5次会议(阶段性检查与审核) | manual | 1h | 2018-10-20 09:00 | 2018-10-20 10:00 |  |  |  | 小组全体成员 | 1h |  |
| 116 | 6.6 | 第6次会议(阶段性检查与审核) | manual | 1h | 2018-10-28 09:00 | 2018-10-28 10:00 |  |  |  | 小组全体成员 | 1h |  |
| 117 | 6.7 | 第7次会议(阶段性检查与审核) | manual | 1h | 2018-11-04 09:00 | 2018-11-04 10:00 |  |  |  | 小组全体成员 | 1h |  |
| 118 | 6.8 | 第8次会议(周任务安排) | manual | 0.5h | 2018-11-10 09:00 | 2018-11-10 09:30 |  |  |  | 小组全体成员 | 0.5h |  |
| 119 | 6.9 | <新任务> | manual | 1d? | 2018-09-21 09:00 | 2018-09-22 09:00 |  |  |  |  |  |  |
| 120 | 6.10 | <新任务> | manual | 1d? | 2018-09-21 09:00 | 2018-09-22 09:00 |  |  |  |  |  |  |
