Schedule from MS Project, 2018-09-19 to 2019-01-20, costs in ¥, A marks actual dates.
Microsoft

## Calendars

- 标准: Mon-Fri 08:00-12:00, 13:00-17:00; Sat-Sun 08:00-21:00. Exceptions (off unless hours are given): 2018-10-01 to 2018-10-07 (国庆假期).

## Resources

| Resource | Rate |
| --- | --- |
| 蔡峰 | 28 |
| 黄为波 | 28 |
| 江亮儒 | 28 |
| 苏雨豪 | 28 |
| 陈子卿 | 28 |
| 小组全体成员 |  |

## Schedule

| ID | WBS | Task | Type | Duration | Start | Finish | Predecessors | Complete | Remaining | Baseline start | Baseline finish | Baseline duration | Constraint | Resources | Work | Actual work | Cost | Actual cost |
| --- | --- | --- | --- | --- | --- | --- | --- | --- | --- | --- | --- | --- | --- | --- | --- | --- | --- | --- |
| 1 | 1 | **需求工程项目准备** |  | 98d | 2018-09-19 09:00 A | 2018-12-17 18:00 |  | 81% | 18.85d | 2018-09-19 09:00 | 2018-11-08 18:00 | 59.75d |  |  | 62h | 58.5h | 1,148 | 1,050 |
| 2 | 1.1 | 确定分组成员 | manual | 1h | 2018-09-19 09:00 A | 2018-09-19 10:00 A |  | 100% |  | 2018-09-19 09:00 | 2018-09-19 10:00 | 1h |  | 小组全体成员 | 1h | 1h |  |  |
| 3 | 1.2 | 课题选定 | manual | 2d | 2018-09-19 10:00 A | 2018-09-21 10:00 A | 2 | 100% |  | 2018-09-19 09:00 | 2018-09-20 18:00 | 2d |  | 小组全体成员 | 2h | 2h |  |  |
| 4 | 1.3 | 统一开发工具 |  | 1d | 2018-09-19 10:00 A | 2018-09-20 10:00 A | 2 | 100% |  | 2018-09-19 09:00 | 2018-09-20 09:00 | 1d |  | 小组全体成员 | 8h | 8h |  |  |
| 5 | 1.4 | 确定小组成员职责 | manual | 1d | 2018-09-19 10:00 A | 2018-09-20 10:00 A | 2 | 100% |  | 2018-09-26 09:00 | 2018-09-27 09:00 | 1d |  | 小组全体成员 | 8h | 8h |  |  |
| 6 | 1.5 | **需求工程项目计划** |  | 89.75d | 2018-09-26 09:00 A | 2018-12-17 18:00 |  | 71% | 26.27d | 2018-09-26 09:00 | 2018-11-07 18:00 | 50.5d |  |  | 43h | 39.5h | 1,148 | 1,050 |
| 7 | 1.5.1 | 采用需求工程项目计划模板 | manual | 0.1h | 2018-09-28 09:00 A | 2018-09-28 09:06 A |  | 100% |  |  |  |  |  | 黄为波 | 0.1h | 0.1h | 2.8 | 2.8 |
| 8 | 1.5.2 | 人力资源管理计划 | manual | 3h | 2018-09-29 09:00 A | 2018-09-29 12:00 A | 7 | 100% |  | 2018-09-28 09:00 | 2018-09-28 12:00 | 3h |  | 蔡峰 | 3h | 3h | 84 | 84 |
| 9 | 1.5.3 | 成本管理计划 | manual | 2h | 2018-09-29 09:00 A | 2018-09-29 11:00 A | 7 | 100% |  | 2018-09-28 09:00 | 2018-09-28 12:00 | 3h |  | 陈子卿 | 2h | 2h | 56 | 56 |
| 10 | 1.5.4 | 沟通管理计划 | manual | 3h | 2018-09-29 09:00 A | 2018-09-29 12:00 A | 7 | 100% |  | 2018-09-28 09:00 | 2018-09-28 12:00 | 3h |  | 苏雨豪 | 3h | 3h | 84 | 84 |
| 11 | 1.5.5 | 风险管理计划 | manual | 3h | 2018-09-29 09:00 A | 2018-09-29 12:00 A | 7 | 100% |  | 2018-09-28 09:00 | 2018-09-28 12:00 | 3h |  | 陈子卿 | 3h | 3h | 84 | 84 |
| 12 | 1.5.6 | 需求工程项目计划甘特图与wbs | manual | 2h | 2018-09-29 09:00 A | 2018-09-29 11:00 A |  | 100% |  |  |  |  |  | 黄为波 | 2h | 2h | 56 | 56 |
| 14 | 1.5.7 | 可行性分析报告起草 |  | 3h | 2018-09-30 15:00 A | 2018-09-30 18:00 A |  | 100% |  | 2018-09-27 09:00 | 2018-09-27 15:00 | 5h | finish no earlier than 2018-09-30 18:00 | 江亮儒 | 3h | 3h | 84 | 84 |
| 15 | 1.5.8 | 整合并检查需求工程项目计划 | manual | 1h | 2018-09-30 09:00 A | 2018-09-30 10:00 A | 7, 8, 9, 10, 11 | 100% |  |  |  |  |  | 黄为波 | 0.3h | 0.3h | 8.4 | 8.4 |
| 16 | 1.5.9 | 需求工程项目计划PPT起草 | manual | 2h | 2018-09-30 09:00 A | 2018-09-30 11:00 A | 7, 8, 9, 10, 11 | 100% |  |  |  |  |  | 苏雨豪 | 2h | 2h | 56 | 56 |
| 17 | 1.5.10 | 需求计划的项目概述错误信息修改 | manual | 1h | 2018-10-13 09:00 A | 2018-10-13 10:00 A | 15 | 100% |  |  |  |  |  | 黄为波 | 1h | 1h | 28 | 28 |
| 18 | 1.5.11 | 增加并细化了技术可行性分析的有关内容 | manual | 1h | 2018-10-13 09:00 A | 2018-10-13 10:00 A | 14 | 100% |  |  |  |  |  | 黄为波 | 1h | 1h | 28 | 28 |
| 19 | 1.5.12 | 修改人力资源管理部分 | manual | 1h | 2018-10-14 09:00 A | 2018-10-14 10:00 A | 15, 8 | 100% |  |  |  |  |  | 蔡峰 | 1h | 1h | 28 | 28 |
| 20 | 1.5.13 | 修改wbs项目收尾部分 | manual | 0.5h | 2018-10-18 09:00 A | 2018-10-18 09:30 A | 12 | 100% |  |  |  |  |  | 黄为波 | 0.5h | 0.5h | 14 | 14 |
| 21 | 1.5.14 | 项目章程的编写 | manual | 1h | 2018-10-20 09:00 A | 2018-10-20 10:00 A |  | 100% |  |  |  |  |  | 苏雨豪 | 1h | 1h | 28 | 28 |
| 22 | 1.5.15 | 需求工程项目计划修改(更新培训日期，删除了不必要的内容) | manual | 1.5h | 2018-10-20 09:00 A | 2018-10-20 10:30 A | 17 | 100% |  |  |  |  |  | 蔡峰; 陈子卿 | 2h | 2h | 56 | 56 |
| 23 | 1.5.16 | 修改需求工程项目计划目录 | manual | 0.1h | 2018-10-21 09:00 A | 2018-10-21 09:06 A | 22 | 100% |  |  |  |  |  | 陈子卿 | 0.1h | 0.1h | 2.8 | 2.8 |
| 24 | 1.5.17 | 质量保证计划编写 | manual | 2h | 2018-10-27 09:00 A | 2018-10-27 11:00 A | 22 | 100% |  |  |  |  |  | 江亮儒; 苏雨豪 | 4h | 4h | 112 | 112 |
| 25 | 1.5.18 | 在需求工程项目计划增加范围、时间、质量管理计划 | manual | 2h | 2018-10-27 09:00 A | 2018-10-27 11:00 A | 23 | 100% |  |  |  |  |  | 黄为波 | 2h | 2h | 56 | 56 |
| 26 | 1.5.19 | 根据预评审对“人员配置管理计划”以及“干系人手册”进行修改 | manual | 1h | 2018-10-27 09:00 A | 2018-10-27 10:00 A | 25 | 100% |  |  |  |  |  | 蔡峰 | 1h | 1h | 28 | 28 |
| 27 | 1.5.20 | 风险管理计划修改，新增采购计划 | manual | 1h | 2018-10-27 09:00 A | 2018-10-27 10:00 A | 26 | 100% |  |  |  |  |  | 陈子卿 | 1h | 1h | 28 | 28 |
| 28 | 1.5.21 | 修改需求工程项目计划答辩PPT | manual | 1h | 2018-10-28 09:00 A | 2018-10-28 10:00 A | 27 | 100% |  |  |  |  |  | 蔡峰; 陈子卿 | 2h | 2h | 56 | 56 |
| 29 | 1.5.22 | 小组组内模拟评审，修改了相关文档错误内容 | manual | 1h | 2018-10-30 09:00 A | 2018-10-30 10:00 A | 28 | 100% |  |  |  |  |  | 小组全体成员 | 1h | 1h |  |  |
| 30 | 1.5.23 | 需求工程项目计划评审 | milestone, manual | 0d | 2018-10-31 09:00 A | 2018-10-31 09:00 A | 29 | 100% |  |  |  |  |  |  |  |  |  |  |
| 31 | 1.5.24 | 修改风险管理计划以及预算 | manual | 0.5h | 2018-11-01 09:00 A | 2018-11-01 09:30 A | 30 | 100% |  |  |  |  |  | 陈子卿 | 0.5h | 0.5h | 14 | 14 |
| 32 | 1.5.25 | 修改项目章程的批准 | manual | 0.5h | 2018-11-04 09:00 A | 2018-11-04 09:30 A | 30 | 100% |  |  |  |  |  | 苏雨豪 | 0.5h | 0.5h | 14 | 14 |
| 33 | 1.5.26 | 修改干系人手册与沟通管理计划 | manual | 0.5h | 2018-11-01 09:00 A | 2018-11-01 09:30 A | 30 | 100% |  |  |  |  |  | 蔡峰 | 0.5h | 0.5h | 14 | 14 |
| 34 | 1.5.27 | 修改可行性分析报告增加SWOT分析 | manual | 0.5h | 2018-11-04 09:00 A | 2018-11-04 09:30 A | 30 | 100% |  |  |  |  |  | 江亮儒 | 0.5h | 0.5h | 14 | 14 |
| 35 | 1.5.28 | 根据评审修改wbs | manual | 0.5h | 2018-11-11 09:00 A | 2018-11-11 09:30 A | 30, 12 | 100% |  |  |  |  |  | 黄为波 | 0.5h | 0.5h | 14 | 14 |
| 36 | 1.5.29 | 小组个人对系统进行了解与构想 | manual | 1h | 2018-11-11 09:00 A | 2018-11-11 10:00 A |  | 100% |  |  |  |  |  | 小组全体成员 | 1h | 1h |  |  |
| 37 | 1.5.30 | 更新干系人手册 | manual | 0.5h | 2018-10-31 09:00 | 2018-10-31 09:30 | 30 |  |  |  |  |  |  | 蔡峰 | 0.5h |  | 14 |  |
| 38 | 1.5.31 | 根据最新标准修改了项目计划中的时薪 | manual | 0.5h | 2018-10-31 09:30 | 2018-10-31 10:00 | 37 |  |  |  |  |  |  | 江亮儒 | 0.5h |  | 14 |  |
| 39 | 1.5.32 | 修改了wbs结构 | manual | 0.5h | 2018-12-14 09:00 | 2018-12-14 09:30 | 35 |  |  |  |  |  |  | 黄为波 | 0.5h |  | 14 |  |
| 40 | 1.5.33 | 重新编写了wbs-io表 | manual | 1h | 2018-12-16 09:00 | 2018-12-16 10:00 | 30, 39 |  |  |  |  |  |  | 黄为波; 江亮儒 | 2h |  | 56 |  |
| 41 | 1.5.34 | <新任务> | manual | 1d? | 2018-09-26 09:00 | 2018-09-27 09:00 |  |  |  |  |  |  |  |  |  |  |  |  |
| 42 | 1.5.35 | <新任务> | manual | 1d? | 2018-09-26 09:00 | 2018-09-27 09:00 |  |  |  |  |  |  |  |  |  |  |  |  |

| ID | WBS | Task | Type | Duration | Start | Finish | Predecessors | Complete | Remaining | Baseline start | Baseline finish | Baseline duration | Resources | Work | Actual work | Cost | Actual cost |
| --- | --- | --- | --- | --- | --- | --- | --- | --- | --- | --- | --- | --- | --- | --- | --- | --- | --- |
| 43 | 2 | **需求开发阶段** |  | 73.25d | 2018-11-15 09:00 A | 2019-01-15 18:00 |  | 6% | 68.86d | 2018-11-01 09:00 | 2018-12-08 18:00 | 44.38d |  | 232.1h | 28h | 6,232.8 | 728 |
| 44 | 2.1 | **需求获取** |  | 62.5d | 2018-11-15 09:00 A | 2019-01-06 18:00 |  | 13% | 54.14d | 2018-11-05 09:00 | 2018-11-14 15:00 | 10.88d |  | 116.1h | 28h | 3,012.8 | 728 |
| 45 | 2.1.1 | 用户群分类 | manual | 1h | 2018-11-15 09:00 A | 2018-11-15 10:00 A | 6, 30 | 100% |  | 2018-11-08 09:00 | 2018-11-08 11:00 | 2h | 蔡峰 | 1h | 1h | 28 | 28 |
| 46 | 2.1.2 | 团队建设 | manual | 2h | 2018-11-20 09:00 | 2018-11-20 11:00 |  |  |  |  |  |  | 小组全体成员 | 2h |  |  |  |
| 47 | 2.1.3 | 定义愿景和范围并编写文档 | manual | 1h | 2018-11-15 09:00 A | 2018-11-15 10:00 A | 6, 30 | 100% |  | 2018-11-08 09:00 | 2018-11-08 12:00 | 3h | 小组全体成员 | 1h | 1h |  |  |
| 48 | 2.1.4 | 学生代表访谈 | manual | 1h | 2018-11-15 09:00 A | 2018-11-15 10:00 A |  | 100% |  |  |  |  | 黄为波 | 1h | 1h | 28 | 28 |
| 49 | 2.1.5 | 修改愿景与范围文档 | manual | 1h | 2018-11-30 09:00 A | 2018-11-30 10:00 A | 57 | 100% |  |  |  |  | 陈子卿; 江亮儒; 黄为波; 蔡峰; 苏雨豪 | 5h | 5h | 140 | 140 |
| 50 | 2.1.6 | 与项目下达者确定愿景与范围 | manual | 1h | 2018-12-01 09:00 A | 2018-12-01 10:00 A | 47 | 100% |  |  |  |  | 小组全体成员 | 1h | 1h |  |  |
| 51 | 2.1.7 | 修改愿景与范围文档 | manual | 1h | 2018-12-02 09:00 A | 2018-12-02 10:00 A | 50, 57 | 100% |  |  |  |  | 江亮儒; 苏雨豪 | 2h | 2h | 56 | 56 |
| 52 | 2.1.8 | 制作并发送教师邀请函与游客邀请函与学生代表邀请函 | manual | 1h | 2018-12-01 09:00 A | 2018-12-01 10:00 A |  | 100% |  |  |  |  | 蔡峰 | 1h | 1h | 28 | 28 |
| 53 | 2.1.9 | 制作app界面原型初步 | manual | 8h | 2018-12-09 09:00 A | 2018-12-09 17:00 A | 48, 59 | 100% |  |  |  |  | 黄为波; 江亮儒 | 16h | 16h | 448 | 448 |
| 54 | 2.1.10 | 制作web界面原型初步 | manual | 14h | 2018-12-02 11:00 | 2018-12-03 12:00 | 59 |  |  |  |  |  | 陈子卿 | 14h |  | 392 |  |
| 55 | 2.1.11 | 修改了愿景与范围文档确定的干系人 | manual | 0.2d | 2018-12-02 10:00 | 2018-12-02 11:36 | 51 |  |  |  |  |  | 陈子卿 | 1.6h |  | 44.8 |  |
| 56 | 2.1.12 | <新任务> | manual | 1d? | 2018-11-15 09:00 | 2018-11-16 09:00 |  |  |  |  |  |  |  |  |  |  |  |
| 57 | 2.1.13 | 教师代表的访谈1 | manual | 1h | 2018-12-01 10:00 | 2018-12-01 11:00 | 52 |  |  |  |  |  | 小组全体成员 | 1h |  |  |  |
| 58 | 2.1.14 | 游客代表的访谈 | manual | 0.5h | 2018-11-15 09:00 | 2018-11-15 09:30 |  |  |  |  |  |  |  |  |  |  |  |
| 59 | 2.1.15 | 教师代表的访谈2 | manual | 1h | 2018-12-02 10:00 | 2018-12-02 11:00 | 49, 51, 57 |  |  |  |  |  | 小组全体成员 | 1h |  |  |  |
| 60 | 2.1.16 | 学生代表的访谈 | manual | 0.5h | 2018-11-15 09:00 | 2018-11-15 09:30 |  |  |  |  |  |  |  |  |  |  |  |
| 61 | 2.1.17 | 管理员代表的访谈1 | manual | 0.5h | 2018-12-21 09:00 | 2018-12-21 09:30 |  |  |  |  |  |  | 小组全体成员 | 0.5h |  |  |  |
| 62 | 2.1.18 | 教师代表的访谈3 | manual | 1h | 2018-12-09 17:00 | 2018-12-09 18:00 | 53, 54 |  |  |  |  |  | 小组全体成员 | 1h |  |  |  |
| 63 | 2.1.19 | 教师代表访谈4 | manual | 1h | 2018-12-10 09:00 | 2018-12-10 10:00 | 62, 67 |  |  |  |  |  | 黄为波; 蔡峰 | 2h |  | 56 |  |
| 64 | 2.1.20 | 教师代表访谈5 | manual | 1h | 2018-12-11 15:00 | 2018-12-11 16:00 | 69, 72 |  |  |  |  |  |  |  |  |  |  |
| 65 | 2.1.21 | 教师代表访谈6 | manual | 1h | 2018-11-15 09:00 | 2018-11-15 10:00 |  |  |  |  |  |  |  |  |  |  |  |
| 66 | 2.1.22 | 管理员代表的访谈2 | manual | 0.5h | 2018-12-21 14:30 | 2018-12-21 15:00 | 68 |  |  |  |  |  | 小组全体成员 | 0.5h |  |  |  |
| 67 | 2.1.23 | 更新界面原型 | manual | 4h | 2018-12-09 18:00 | 2018-12-10 09:00 | 62 |  |  |  |  |  | 陈子卿 | 4h |  | 112 |  |
| 68 | 2.1.24 | 制作管理员界面原型 | manual | 4h | 2018-12-21 09:30 | 2018-12-21 14:30 | 61 |  |  |  |  |  | 陈子卿 | 4h |  | 112 |  |
| 69 | 2.1.25 | 界面原型的修改 | manual | 12h | 2018-12-10 10:00 | 2018-12-11 15:00 | 63 |  |  |  |  |  | 陈子卿; 黄为波 | 24h |  | 672 |  |
| 70 | 2.1.26 | 修改管理员界面原型 | manual | 2h | 2018-12-21 15:00 | 2018-12-21 17:00 | 66 |  |  |  |  |  | 陈子卿 | 2h |  | 56 |  |
| 71 | 2.1.27 | 添加新版测试用例 | manual | 4h | 2019-01-01 09:00 | 2019-01-01 14:00 |  |  |  |  |  |  | 黄为波 | 4h |  | 112 |  |
| 72 | 2.1.28 | 修改web界面原型 | manual | 1h | 2018-12-10 10:00 | 2018-12-10 11:00 | 63 |  |  |  |  |  | 陈子卿 | 1h |  | 28 |  |
| 73 | 2.1.29 | 管理员代表访谈3 | manual | 0.5h | 2018-12-22 08:00 | 2018-12-22 08:30 | 70 |  |  |  |  |  | 小组全体成员 | 0.5h |  |  |  |
| 74 | 2.1.30 | 修改愿景与范围文档 | manual | 0.5h | 2018-12-10 10:00 | 2018-12-10 10:30 | 63 |  |  |  |  |  | 江亮儒 | 0.5h |  | 14 |  |
| 75 | 2.1.31 | 修改web界面原型 | manual | 10h | 2018-12-11 16:00 | 2018-12-13 09:00 | 64 |  |  |  |  |  | 黄为波 | 10h |  | 280 |  |
| 76 | 2.1.32 | 修改app界面原型 | manual | 6h | 2018-12-13 09:00 | 2018-12-13 16:00 | 75 |  |  |  |  |  | 黄为波; 江亮儒 | 12h |  | 336 |  |
| 77 | 2.1.33 | 修改管理员界面原型 | manual | 1.5h | 2018-12-22 08:30 | 2018-12-22 10:00 | 73 |  |  |  |  |  | 陈子卿 | 1.5h |  | 42 |  |
| 78 | 2.1.34 | 制作jad会议PPT | manual | 1h | 2018-12-22 10:00 | 2018-12-22 11:00 | 75, 76, 77 |  |  |  |  |  | 蔡峰 | 1h |  | 28 |  |
| 79 | 2.1.35 | jad会议 | manual | 1h | 2018-12-22 11:00 | 2018-12-22 12:00 | 78 |  |  |  |  |  |  |  |  |  |  |
| 80 | 2.1.36 | <新任务> | manual | 1d? | 2018-11-15 09:00 | 2018-11-16 09:00 |  |  |  |  |  |  |  |  |  |  |  |
| 81 | 2.1.37 | <新任务> | manual | 1d? | 2018-11-15 09:00 | 2018-11-16 09:00 |  |  |  |  |  |  |  |  |  |  |  |

| ID | WBS | Task | Type | Duration | Start | Finish | Predecessors | Baseline start | Baseline finish | Baseline duration | Resources | Work | Cost |
| --- | --- | --- | --- | --- | --- | --- | --- | --- | --- | --- | --- | --- | --- |
| 82 | 2.2 | **需求分析** |  | 38.12d | 2018-12-11 09:00 | 2019-01-12 18:00 |  | 2018-11-15 09:00 | 2018-11-21 10:30 | 7.44d |  | 78h | 2,184 |
| 83 | 2.2.1 | 分析获取需求的可行性 | manual | 1h | 2018-12-12 09:00 | 2018-12-12 10:00 |  | 2018-11-16 09:00 | 2018-11-16 12:00 | 3h | 陈子卿; 黄为波 | 2h | 56 |
| 84 | 2.2.2 | 编写数据字典 | manual | 6h | 2018-12-22 09:00 | 2018-12-22 15:00 | 83 | 2018-11-19 09:00 | 2018-11-20 11:00 | 10h | 黄为波 | 6h | 168 |
| 85 | 2.2.3 | 编写e-r图，数据库设计 | manual | 2h | 2018-12-09 18:00 | 2018-12-09 20:00 | 62, 53, 54 |  |  |  | 黄为波 | 2h | 56 |
| 86 | 2.2.4 | 编写数据字典 | manual | 2h | 2018-12-23 09:00 | 2018-12-23 11:00 | 62, 53, 54 |  |  |  | 黄为波 | 2h | 56 |
| 87 | 2.2.5 | 编写游客用例图 | manual | 2h | 2018-12-23 09:00 | 2018-12-23 11:00 | 62, 53, 54 |  |  |  | 黄为波 | 2h | 56 |
| 88 | 2.2.6 | 编写游客对话框图 | manual | 2h | 2018-12-23 09:00 | 2018-12-23 11:00 | 62, 53, 54 |  |  |  | 黄为波 | 2h | 56 |
| 89 | 2.2.7 | 编写游客测试用例 | manual | 2h | 2018-12-23 09:00 | 2018-12-23 11:00 | 62, 53, 54 |  |  |  | 黄为波 | 2h | 56 |
| 90 | 2.2.8 | 编写教师，学生用例图 | manual | 4h | 2018-12-23 09:00 | 2018-12-23 13:00 | 62, 53, 54 |  |  |  | 江亮儒 | 4h | 112 |
| 91 | 2.2.9 | 编写教师，学生顺序图 | manual | 4h | 2018-12-24 09:00 | 2018-12-24 14:00 | 62, 53, 54 |  |  |  | 江亮儒 | 4h | 112 |
| 92 | 2.2.10 | 编写教师，学生对话框图 | manual | 4h | 2018-12-24 09:00 | 2018-12-24 14:00 | 62, 53, 54 |  |  |  | 江亮儒 | 4h | 112 |
| 93 | 2.2.11 | 编写管理员顺序图 | manual | 4h | 2018-12-24 09:00 | 2018-12-24 14:00 | 62, 53, 54 |  |  |  | 蔡峰 | 4h | 112 |
| 94 | 2.2.12 | 编写管理员对话框图 | manual | 4h | 2018-12-24 09:00 | 2018-12-24 14:00 | 62, 53, 54 |  |  |  | 蔡峰 | 4h | 112 |
| 95 | 2.2.13 | 制作用户手册 | manual | 2h | 2018-12-23 09:00 | 2018-12-23 11:00 | 62, 53, 54 |  |  |  | 陈子卿 | 2h | 56 |
| 96 | 2.2.14 | 重写教师学生游客用例说明 | manual | 8h | 2018-12-22 10:00 | 2018-12-22 18:00 | 75, 76, 77 |  |  |  | 江亮儒 | 8h | 224 |
| 97 | 2.2.15 | 重写教师学生游客对话框图，顺序图 | manual | 8h | 2018-12-22 10:00 | 2018-12-22 18:00 | 75, 76, 77 |  |  |  | 江亮儒 | 8h | 224 |
| 98 | 2.2.16 | <新任务> | manual | 1d? | 2018-12-11 09:00 | 2018-12-12 09:00 |  |  |  |  |  |  |  |
| 99 | 2.2.17 | <新任务> | manual | 1d? | 2018-12-11 09:00 | 2018-12-12 09:00 |  |  |  |  |  |  |  |
| 100 | 2.2.18 | 编写并发送需求优先级打分表(除管理员部分) | manual | 3h | 2018-12-22 12:00 | 2018-12-22 15:00 | 79 |  |  |  | 江亮儒 | 3h | 84 |
| 101 | 2.2.19 | 统计项目优先级打分表结果 | manual | 2h | 2018-12-22 15:00 | 2018-12-22 17:00 | 100 |  |  |  | 江亮儒 | 2h | 56 |
| 102 | 2.2.20 | 统计管理员需求优先级打分表 | manual | 1h | 2018-12-22 12:00 | 2018-12-22 13:00 | 77, 79 |  |  |  | 蔡峰 | 1h | 28 |
| 103 | 2.2.21 | 添加更加精确的用例描述 | manual | 2h | 2019-01-10 09:00 | 2019-01-10 11:00 |  |  |  |  | 江亮儒 | 2h | 56 |
| 104 | 2.2.22 | 修改了web端界面原型 | manual | 2h | 2018-12-13 09:00 | 2018-12-13 11:00 | 75 |  |  |  | 黄为波 | 2h | 56 |
| 105 | 2.2.23 | 编写并上传管理员用例相关文档 | manual | 8h | 2019-01-11 09:00 | 2019-01-12 09:00 | 75, 76, 77 |  |  |  | 蔡峰 | 8h | 224 |
| 106 | 2.2.24 | 编写管理员顺序图 | manual | 4h | 2019-01-11 09:00 | 2019-01-11 14:00 | 75, 76, 77 |  |  |  | 蔡峰 | 4h | 112 |
| 107 | 2.2.25 | <新任务> | manual | 1d? | 2018-12-11 09:00 | 2018-12-12 09:00 |  |  |  |  |  |  |  |

| ID | WBS | Task | Type | Duration | Start | Finish | Predecessors | Baseline start | Baseline finish | Baseline duration | Resources | Work | Cost |
| --- | --- | --- | --- | --- | --- | --- | --- | --- | --- | --- | --- | --- | --- |
| 108 | 2.3 | **需求规范规格** |  | 57.75d | 2018-11-21 09:00 | 2019-01-08 18:00 |  | 2018-11-21 09:00 | 2018-11-28 18:00 | 9.25d |  | 9h | 224 |
| 109 | 2.3.1 | 确定每个需求的唯一标识 | manual | 1h | 2018-12-22 10:00 | 2018-12-22 11:00 | 75, 76, 77 | 2018-11-23 09:00 | 2018-11-23 14:00 | 4h | 江亮儒 | 1h | 28 |
| 110 | 2.3.2 | 记录非功能需求 | manual | 1h | 2018-12-10 09:00 | 2018-12-10 10:00 |  | 2018-11-23 09:00 | 2018-11-23 11:00 | 2h | 苏雨豪; 陈子卿 | 2h | 56 |
| 111 | 2.3.3 | 编写需求规格说明书 | manual | 1h | 2018-12-11 09:00 | 2018-12-11 10:00 | 109, 110 | 2018-11-26 09:00 | 2018-11-28 09:00 | 2d | 小组全体成员 | 1h |  |
| 112 | 2.3.4 | 根据最新界面更新用例图描述 | manual | 5h | 2019-01-08 09:00 | 2019-01-08 15:00 | 75, 76, 77 |  |  |  | 江亮儒 | 5h | 140 |
| 113 | 2.3.5 | 需求SRS评审 | milestone, manual | 0d | 2018-12-22 18:00 | 2018-12-22 18:00 | 111, 96, 97, 101, 102 |  |  |  |  |  |  |
| 114 | 2.4 | **需求规格审核** |  | 17.5d | 2019-01-01 09:00 | 2019-01-15 18:00 |  | 2018-11-28 09:00 | 2018-12-03 18:00 | 7.25d |  | 29h | 812 |
| 115 | 2.4.1 | 编写web用户手册 | manual | 8h | 2019-01-13 10:30 | 2019-01-13 18:30 | 139 | 2018-11-30 09:00 | 2018-11-30 16:00 | 6h | 陈子卿 | 8h | 224 |
| 116 | 2.4.2 | 编写app用户手册 | manual | 6h | 2019-01-13 10:30 | 2019-01-13 16:30 | 139 |  |  |  | 江亮儒 | 6h | 168 |
| 117 | 2.4.3 | 修改界面原型存在的BUG | manual | 1h | 2019-01-13 16:30 | 2019-01-13 17:30 | 116 |  |  |  | 陈子卿 | 1h | 28 |
| 118 | 2.4.4 | 更新用户手册 | manual | 1h | 2019-01-13 17:30 | 2019-01-13 18:30 | 117 |  |  |  | 陈子卿 | 1h | 28 |
| 119 | 2.4.5 | 重新编写数据字典以及数据库设计 | manual | 5h | 2019-01-13 18:30 | 2019-01-14 10:30 | 75, 76, 77, 118 |  |  |  | 黄为波 | 5h | 140 |
| 120 | 2.4.6 | 增加APP测试用例 | manual | 4h | 2019-01-12 09:30 | 2019-01-12 13:30 | 131 |  |  |  | 黄为波 | 4h | 112 |
| 121 | 2.4.7 | 增加管理员部分测试用例 | manual | 4h | 2018-12-22 10:00 | 2018-12-22 14:00 | 75, 76, 77 |  |  |  | 蔡峰 | 4h | 112 |
| 122 | 3 | **需求管理阶段** |  | 11.25d | 2019-01-06 09:00 | 2019-01-15 12:00 |  | 2018-12-05 09:00 | 2018-12-13 18:00 | 10.25d |  | 36.5h | 896 |
| 123 | 3.1 | 编写变更管理文档 | manual | 1h | 2019-01-08 09:00 | 2019-01-08 10:00 |  |  |  |  | 苏雨豪 | 1h | 28 |
| 124 | 3.2 | 编写变更申请书 | manual | 0.5h | 2019-01-08 09:00 | 2019-01-08 09:30 |  |  |  |  | 苏雨豪 | 0.5h | 14 |
| 125 | 3.3 | 修改变更管理文档 | manual | 0.5h | 2019-01-09 09:00 | 2019-01-09 09:30 |  |  |  |  | 江亮儒 | 0.5h | 14 |
| 126 | 3.4 | 将需求导入DOORS需求管理工具 | manual | 2h | 2019-01-09 09:30 | 2019-01-09 11:30 | 75, 76, 77, 96, 97, 123, 124, 125 |  |  |  | 苏雨豪 | 2h | 56 |
| 127 | 3.5 | 建立各个需求之间的关联 | manual | 6h | 2019-01-09 11:30 | 2019-01-10 09:30 | 126 |  |  |  | 苏雨豪 | 6h | 168 |
| 128 | 3.6 | 分析变更的需求的影响 | manual | 2h | 2019-01-10 09:30 | 2019-01-10 11:30 | 127 |  |  |  | 苏雨豪 | 2h | 56 |
| 129 | 3.7 | 修改变更申请书 | manual | 1h | 2019-01-10 11:30 | 2019-01-10 13:30 | 124, 128 |  |  |  | 苏雨豪 | 1h | 28 |
| 130 | 3.8 | 建立基线并控制需求集合版本 | manual | 1h | 2019-01-10 09:30 | 2019-01-10 10:30 | 127 | 2018-12-05 09:00 | 2018-12-06 09:00 | 1d | 苏雨豪 | 1h | 28 |
| 131 | 3.9 | 重新编写测试用例 | manual | 12h | 2019-01-10 14:30 | 2019-01-12 09:30 | 130, 133, 134, 129 | 2018-12-07 09:00 | 2018-12-08 09:00 | 1d | 黄为波 | 12h | 336 |
| 132 | 3.10 | 建立CCB变更控制委员会 | manual | 1h | 2019-01-09 09:00 | 2019-01-09 10:00 |  |  |  |  | 黄为波 | 1h | 28 |
| 133 | 3.11 | 向CCB委员会主席确认变更需求申请 | manual | 1h | 2019-01-10 13:30 | 2019-01-10 14:30 | 132, 134, 129, 130 |  |  |  | 黄为波 | 1h | 28 |
| 134 | 3.12 | 向CCB委员会开发者代表确定技术可行性 | manual | 1h | 2019-01-09 09:00 | 2019-01-09 10:00 |  |  |  |  | 江亮儒 | 1h | 28 |
| 135 | 3.13 | 变更部分界面原型 | manual | 1h | 2019-01-12 17:00 | 2019-01-12 18:00 | 133 | 2018-12-10 09:00 | 2018-12-12 09:00 | 2d | 黄为波 | 1h | 28 |
| 136 | 3.14 | 变更部分用户手册 | manual | 1h | 2019-01-12 18:00 | 2019-01-12 19:00 | 135 | 2018-12-10 09:00 | 2018-12-12 09:00 | 2d | 江亮儒; 陈子卿 | 2h | 56 |
| 137 | 3.15 | 制作验证变更评审PPT | manual | 4h | 2019-01-12 19:00 | 2019-01-13 10:00 | 136 |  |  |  | 小组全体成员 | 4h |  |
| 138 | 3.16 | 验证变更内部评审 | manual | 0.5h | 2019-01-13 10:00 | 2019-01-13 10:30 | 137 |  |  |  | 小组全体成员 | 0.5h |  |
| 139 | 3.17 | 验证变更评审 | milestone, manual | 0d | 2019-01-13 10:30 | 2019-01-13 10:30 | 138 | 2018-12-10 09:00 | 2018-12-12 09:00 | 2d | 苏雨豪 |  |  |

| ID | WBS | Task | Type | Duration | Start | Finish | Predecessors | Total slack | Free slack | Resources | Work | Cost |
| --- | --- | --- | --- | --- | --- | --- | --- | --- | --- | --- | --- | --- |
| 140 | 4 | **后期计划** |  | 0.75d | 2019-01-15 09:00 | 2019-01-15 16:00 |  |  |  |  | 20h | 560 |
| 141 | 4.1 | 软件概要设计说明 | manual | 6h | 2019-01-13 09:00 | 2019-01-13 15:00 |  |  |  | 苏雨豪 | 6h | 168 |
| 142 | 4.2 | 测试计划 | manual | 2h | 2019-01-12 09:00 | 2019-01-12 11:00 |  |  |  | 苏雨豪 | 2h | 56 |
| 143 | 4.3 | 安装部署计划 | manual | 2h | 2019-01-12 09:00 | 2019-01-12 11:00 |  |  |  | 苏雨豪 | 2h | 56 |
| 144 | 4.4 | 系统维护计划 | manual | 2h | 2019-01-12 09:00 | 2019-01-12 11:00 |  |  |  | 苏雨豪 | 2h | 56 |
| 145 | 4.5 | 培训计划 | manual | 2h | 2019-01-12 09:00 | 2019-01-12 11:00 |  |  |  | 苏雨豪 | 2h | 56 |
| 146 | 4.6 | 系统设计与实现计划 | manual | 3h | 2018-12-30 09:00 | 2018-12-30 12:00 |  |  |  | 蔡峰; 江亮儒 | 6h | 168 |
| 147 | 5 | **项目收尾** |  | 19.25d | 2019-01-05 09:00 | 2019-01-20 18:00 |  |  |  |  | 14h |  |
| 148 | 5.1 | 制作最终评审PPT | manual | 4h | 2019-01-14 10:30 | 2019-01-14 15:30 | 139, 115, 116, 117, 118, 119, 120, 121 |  |  | 小组全体成员 | 4h |  |
| 149 | 5.2 | 小组成员个人总结 | manual | 1h | 2019-01-13 09:00 | 2019-01-13 10:00 | 139 |  |  | 小组全体成员 | 1h |  |
| 150 | 5.3 | 小组总体工作总结 | manual | 9h | 2019-01-13 09:00 | 2019-01-13 18:00 | 139 |  |  | 小组全体成员 | 9h |  |
| 151 | 5.4 | 最终评审PPT答辩 | milestone, manual | 0d | 2019-01-14 15:30 | 2019-01-14 15:30 | 148, 149, 150, 113 |  |  | 小组全体成员 |  |  |
| 152 | 6 | **培训与翻转课堂** |  | 99.38d | 2018-09-28 09:00 | 2018-12-28 12:00 |  | 0d |  |  | 35h | 588 |
| 153 | 6.1 | 负责讲解project的使用 | manual | 2h | 2018-09-28 09:00 | 2018-09-28 11:00 |  |  |  | 小组全体成员; 黄为波 | 3h | 28 |
| 154 | 6.2 | 负责讲解word文档规范排版 | manual | 1h | 2018-09-29 09:00 | 2018-09-29 10:00 |  |  |  | 黄为波; 小组全体成员 | 2h | 28 |
| 155 | 6.3 | uml概述的学习以及PPT制作 | manual | 1h | 2018-10-13 09:00 | 2018-10-13 10:00 |  |  |  | 小组全体成员 | 1h |  |
| 156 | 6.4 | 1.7UML2.0新特性+目录 | manual | 2h | 2018-10-14 09:00 | 2018-10-14 11:00 | 155 |  |  | 苏雨豪 | 2h | 56 |
| 157 | 6.5 | 完成1.1-1.4UML的结构制作 | manual | 2h | 2018-10-14 09:00 | 2018-10-14 11:00 | 155 |  |  | 陈子卿 | 2h | 56 |
| 158 | 6.6 | UML图PPT的初步编写 | manual | 2h | 2018-10-14 09:00 | 2018-10-14 11:00 | 155 |  |  | 江亮儒 | 2h | 56 |
| 159 | 6.7 | 完成UML视图及系统开发阶段部分 | manual | 2h | 2018-10-14 09:00 | 2018-10-14 11:00 | 155 |  |  | 蔡峰 | 2h | 56 |
| 160 | 6.8 | uml概述PPT答辩 | milestone, manual | 0d | 2018-10-17 09:00 | 2018-10-17 09:00 |  |  |  |  |  |  |
| 161 | 6.9 | uml概述PPT修改 | manual | 0.5h | 2018-10-19 09:00 | 2018-10-19 09:30 | 156, 157, 158, 159 |  |  | 江亮儒 | 0.5h | 14 |
| 162 | 6.10 | uml工具的学习 | manual | 1h | 2018-10-21 09:00 | 2018-10-21 10:00 |  |  |  | 小组全体成员 | 1h |  |
| 163 | 6.11 | uml工具翻转PPT制作 | manual | 1h | 2018-10-21 09:00 | 2018-10-21 10:00 |  |  |  | 江亮儒 | 1.5h | 42 |
| 164 | 6.12 | uml工具翻转PPT答辩 | milestone, manual | 0d | 2018-10-24 09:00 | 2018-10-24 09:00 |  |  |  |  |  |  |
| 165 | 6.13 | uml建模基础学习 | manual | 1h | 2018-10-25 09:00 | 2018-10-25 10:00 |  |  |  | 小组全体成员 | 1h |  |
| 166 | 6.14 | 用例图、类图PPT制作 |  | 2h | 2018-10-25 10:00 | 2018-10-25 12:00 | 165 | 103.38d | 6.88d | 黄为波 | 2h | 56 |
| 167 | 6.15 | 通信图PPT制作 | manual | 1h | 2018-10-27 09:00 | 2018-10-27 10:00 | 165 |  |  | 陈子卿 | 1h | 28 |
| 168 | 6.16 | 部署图PPT制作 | manual | 1h | 2018-10-28 09:00 | 2018-10-28 10:00 | 165 |  |  | 江亮儒 | 1h | 28 |
| 169 | 6.17 | 状态机图PPT制作 | manual | 1h | 2018-10-28 09:00 | 2018-10-28 10:00 | 165 |  |  | 苏雨豪 | 1h | 28 |
| 170 | 6.18 | 顺序图PPT制作 | manual | 1h | 2018-10-27 09:00 | 2018-10-27 10:00 | 165 |  |  | 蔡峰 | 1h | 28 |
| 171 | 6.19 | uml图PPT答辩 | milestone, manual | 0d | 2018-10-31 09:00 | 2018-10-31 09:00 | 166, 167, 168, 169, 170 |  |  |  |  |  |
| 172 | 6.20 | uml界面原型学习 | manual | 1h | 2018-11-04 09:00 | 2018-11-04 10:00 |  |  |  | 小组全体成员 | 1h |  |
| 173 | 6.21 | uml界面原型翻转 | milestone, manual | 0d | 2018-11-06 09:00 | 2018-11-06 09:00 | 172 |  |  |  |  |  |
| 174 | 6.22 | 制作学习PPTUML基础3 | manual | 4h | 2018-12-09 09:00 | 2018-12-09 13:00 |  |  |  | 小组全体成员 | 4h |  |
| 175 | 6.23 | 制作学习PPTUML基础4 | manual | 3h | 2018-12-28 09:00 | 2018-12-28 12:00 |  |  |  | 蔡峰; 小组全体成员 | 6h | 84 |

| ID | WBS | Task | Type | Duration | Start | Finish | Total slack | Resources | Work |
| --- | --- | --- | --- | --- | --- | --- | --- | --- | --- |
| 176 | 7 | **会议** |  | 115.62d | 2018-09-21 09:00 | 2019-01-04 10:00 | 0d |  | 14.5h |
| 177 | 7.1 | 第1次会议（明确贯穿项目的职责） | manual | 1h | 2018-09-21 09:00 | 2018-09-21 10:00 |  | 小组全体成员 | 1h |
| 178 | 7.2 | 第2次会议(任务的安排与约定) | manual | 1h | 2018-09-28 09:00 | 2018-09-28 10:00 |  | 小组全体成员 | 1h |
| 179 | 7.3 | 第3次会议(任务的安排与约定) | manual | 1h | 2018-10-12 09:00 | 2018-10-12 10:00 |  | 小组全体成员 | 1h |
| 180 | 7.4 | 第4次会议(任务的安排与约定) | manual | 1h | 2018-10-19 09:00 | 2018-10-19 10:00 |  | 小组全体成员 | 1h |
| 181 | 7.5 | 第5次会议(阶段性检查与审核) | manual | 1h | 2018-10-20 09:00 | 2018-10-20 10:00 |  | 小组全体成员 | 1h |
| 182 | 7.6 | 第6次会议(阶段性检查与审核) | manual | 1h | 2018-10-28 09:00 | 2018-10-28 10:00 |  | 小组全体成员 | 1h |
| 183 | 7.7 | 第7次会议(阶段性检查与审核) | manual | 1h | 2018-11-04 09:00 | 2018-11-04 10:00 |  | 小组全体成员 | 1h |
| 184 | 7.8 | 第8次会议(周任务安排) | manual | 0.5h | 2018-11-13 09:00 | 2018-11-13 09:30 |  | 小组全体成员 | 0.5h |
| 185 | 7.9 | 第9次会议 | manual | 1h | 2018-11-23 09:00 | 2018-11-23 10:00 |  | 小组全体成员 | 1h |
| 186 | 7.10 | 第10次会议 | manual | 1h | 2018-12-09 09:00 | 2018-12-09 10:00 |  | 小组全体成员 | 1h |
| 187 | 7.11 | 第11次会议 | manual | 1h | 2018-12-16 09:00 | 2018-12-16 10:00 |  | 小组全体成员 | 1h |
| 188 | 7.12 | 第12次会议 | manual | 1h | 2018-12-21 09:00 | 2018-12-21 10:00 |  | 小组全体成员 | 1h |
| 189 | 7.13 | 第13次会议 | manual | 1h | 2018-12-26 09:00 | 2018-12-26 10:00 |  | 小组全体成员 | 1h |
| 190 | 7.14 | 第14次会议 | manual | 1h | 2018-12-28 09:00 | 2018-12-28 10:00 |  | 小组全体成员 | 1h |
| 191 | 7.15 | 第15次会议 | manual | 1h | 2019-01-04 09:00 | 2019-01-04 10:00 |  | 小组全体成员 | 1h |
